Schedule from MS Project, 2026-04-13 to 2027-08-07, status date 2026-07-22, A marks actual dates.

## Calendars

- Стандартный: Mon-Sun 09:00-13:00, 14:00-18:00.
- Календарные дни: Mon-Sun 09:00-13:00, 14:00-18:00.

## Schedule

| ID | WBS | Task | Type | Duration | Start | Finish | Predecessors | Complete | Remaining | Baseline start | Baseline finish | Baseline duration | Baseline 1 start | Baseline 1 finish | Total slack | Free slack | Constraint | Calendar | ID проекта | БЛОК | Text11 | Text5 | Text9 | ВОР (план) | Ед. изм | ВОР (остаток) | ЛОТ | Text28 | ВОР (факт) |
| --- | --- | --- | --- | --- | --- | --- | --- | --- | --- | --- | --- | --- | --- | --- | --- | --- | --- | --- | --- | --- | --- | --- | --- | --- | --- | --- | --- | --- | --- |
| 1 | 1 | **msp_leninsky** |  | 482d | 2026-04-13 A | 2027-08-07 |  | 2% | 474.4d | 2026-04-21 | 2027-03-12 | 326d | 2024-02-19 | 2024-04-19 | 0d |  |  | Календарные дни | 0feb8a44-a0f4-11ef-af7f-0050560219d5 | Суммарная задача | 135 |  |  |  |  |  |  |  |  |
| 2 | 1.1 | **СМР** |  | 482d | 2026-04-13 A | 2027-08-07 |  | 2% | 474.4d | 2026-04-21 | 2027-03-12 | 326d |  |  | 0d |  |  | Календарные дни |  | СМР | 220 |  |  |  |  |  |  |  |  |
| 3 | 1.1.1 | **Блок А** |  | 482d | 2026-04-13 A | 2027-08-07 |  | 2% | 474.4d | 2026-04-21 | 2027-03-12 | 326d |  |  | 0d |  |  | Календарные дни |  | СМР | 276 |  |  |  |  |  |  |  |  |
| 4 | 1.1.1.1 | Сваи |  | 92d | 2026-04-21 | 2026-07-21 |  |  |  | 2026-04-21 | 2026-07-21 | 92d |  |  | 2d | 0d | start no earlier than 2026-04-20 | Календарные дни |  | СМР | 232 | нет в ИГ | Начало просрочено | 18000 | м2 | 18000 | ЛОТ №7 |  |  |
| 5 | 1.1.1.2 | **КОРОБКА, КРОВЛЯ, СТЕНЫ** |  | 432d | 2026-04-13 A | 2027-06-18 |  | 4% | 415.17d | 2026-04-21 | 2027-01-23 | 278d |  |  | 50d |  |  | Календарные дни |  | СМР | 233 |  | Окончание просрочено |  |  |  | ЛОТ №8 | НАЧАТЬ И ЗАКОНЧИТЬ |  |
| 6 | 1.1.1.2.1 | Фундаменты сборные |  | 120.25d | 2026-04-13 A | 2026-09-15 | 4 | 55% | 54d | 2026-04-21 | 2026-11-06 | 200d |  |  | 0d |  | finish no earlier than 2026-09-15 | Календарные дни |  | СМР | 110 |  | Окончание просрочено | 350 | шт | 145 | 8.1 | НАЧАТЬ И ЗАКОНЧИТЬ | 205 |
| 7 | 1.1.1.2.2 | **Фундаменты монолитные** |  | 27d | 2026-07-01 A | 2026-07-27 A |  | 100% |  | 2026-11-20 | 2026-12-10 | 21d |  |  |  |  |  | Календарные дни |  | СМР | 26 |  | Начало просрочено |  |  |  | 8.2 | НАЧАТЬ |  |
| 8 | 1.1.1.2.2.1 | Устройство монолитной железобетонной плиты под технические помещения (в тч земляные работы, основание песок, щебень, гидроизоляция) | milestone | 0d | 2026-07-01 A | 2026-07-27 A | 6FS+13d | 100% |  | 2026-06-15 | 2026-10-15 | 122d |  |  |  |  | finish no earlier than 2026-08-20 | Календарные дни |  | СМР | 26 | за месяц после корректировки эксп | Будущая задача | 7500 | м3 | 2000 |  |  | 5500 |
| 9 | 1.1.1.2.3 | **Цокольные панели** |  | 80d | 2027-01-17 | 2027-04-06 |  |  |  | 2026-09-11 | 2026-10-30 | 50d |  |  |  |  |  | Календарные дни |  | СМР |  |  |  |  |  |  |  |  |  |
| 10 | 1.1.1.2.3.1 | Укладка цокольных панелей (в тч земляные работы, устройство стеновых стыков, монолитные участки, гидроизоляция) |  | 80d | 2027-02-06 | 2027-04-26 | 6FS+143d |  |  | 2026-09-11 | 2026-10-30 | 50d |  |  | 0d |  |  | Календарные дни |  | СМР | 300 |  | Начало просрочено | 3500 | м2 | 3500 | 8.3 | НАЧАТЬ |  |
| 11 | 1.1.1.2.4 | **Железобетонные колонны** |  | 131d | 2026-05-26 | 2026-10-03 |  |  |  | 2026-06-03 | 2026-10-11 | 131d |  |  | 308d |  |  | Календарные дни |  | СМР | 126 |  |  |  |  |  |  |  |  |
| 12 | 1.1.1.2.4.1 | Установка колонн (в тч земляные работы , замоноличивание стыков, гидроизоляция) |  | 131d | 2026-05-26 | 2026-10-03 | 6SS+43d |  |  | 2026-06-03 | 2026-10-11 | 131d |  |  | 308d |  | start no earlier than 2026-04-20 | Календарные дни |  | СМР | 126 |  | Начало просрочено | 4000 | м3 | 4000 | 8.4 | НАЧАТЬ |  |
| 13 | 1.1.1.2.5 | **Металлические конструкции** |  | 335d | 2026-07-16 | 2027-06-15 |  |  |  | 2026-09-11 | 2027-01-18 | 130d |  |  | 53d |  |  | Календарные дни |  | СМР | 285 |  | Начало просрочено |  |  |  | 8.5 | НАЧАТЬ |  |
| 14 | 1.1.1.2.5.1 | Монтаж балок перекрытий, колонн, опор под оборудование |  | 90d | 2027-02-09 | 2027-05-09 | 10SS+3d |  |  | 2026-09-14 | 2026-12-12 | 90d |  |  | 0d |  |  | Календарные дни |  | СМР | 279 |  | Начало просрочено | 200 |  | 200 |  | НАЧАТЬ |  |
| 15 | 1.1.1.2.5.2 | Монтаж балок перекрытий, колонн, опор под оборудование |  | 90d | 2027-02-09 | 2027-05-09 | 10SS+3d |  |  | 2026-09-14 | 2026-12-12 | 90d |  |  | 90d |  |  | Календарные дни |  | СМР | 279 |  | Начало просрочено | 200 |  | 200 |  | НАЧАТЬ |  |
| 16 | 1.1.1.2.5.3 | Монтаж наружного фахверка |  | 98d | 2027-03-10 | 2027-06-15 | 10SS+32d |  |  | 2026-10-13 | 2027-01-18 | 98d |  |  | 53d |  |  | Календарные дни |  | СМР | 285 |  | Начало просрочено | 20 |  | 20 |  | НАЧАТЬ |  |
| 17 | 1.1.1.2.5.4 | Монтаж внутреннего фахверк |  | 45d | 2027-03-10 | 2027-04-23 | 10SS+32d |  |  | 2026-10-13 | 2026-11-26 | 45d |  |  | 91d | 0d |  | Календарные дни |  | СМР | 253 |  | Начало просрочено | 20 |  | 20 |  | НАЧАТЬ |  |
| 18 | 1.1.1.2.5.5 | Монтаж пристройки (технические помещения) |  | 40d | 2026-07-16 | 2026-08-24 | 8FS-12d |  |  | 2026-11-29 | 2027-01-07 | 40d |  |  | 332d | 0d |  | Календарные дни |  | СМР | 26 |  | Начало просрочено | 100 |  | 100 |  | НАЧАТЬ |  |
| 19 | 1.1.1.2.5.6 | Монтаж наружной металлической лестницы с покрытием из реш.настила (входные) с ограждением |  | 90d | 2027-02-06 | 2027-05-06 | 10SS |  |  | 2026-09-11 | 2026-12-09 | 90d |  |  | 93d |  |  | Календарные дни |  | СМР | 310 |  | Начало просрочено | 50 |  | 50 |  | НАЧАТЬ |  |
| 20 | 1.1.1.2.5.7 | Монтаж м/к наружной металлической лестницы (в т. ч. пожарной) |  | 28d | 2027-04-11 | 2027-05-08 | 17SS+32d |  |  | 2026-11-14 | 2026-12-11 | 28d |  |  | 91d |  |  | Календарные дни |  | СМР | 253 |  | Начало просрочено | 100 |  | 100 |  | НАЧАТЬ |  |
| 21 | 1.1.1.2.5.8 | Монтаж лестницы на мезонин |  | 28d | 2027-04-11 | 2027-05-08 | 17SS+32d |  |  | 2026-11-14 | 2026-12-11 | 28d |  |  | 91d |  |  | Календарные дни |  | СМР | 253 |  | Начало просрочено | 50 |  | 50 |  | НАЧАТЬ |  |
| 22 | 1.1.1.2.5.9 | Монтаж ограждения мезонина |  | 28d | 2027-04-11 | 2027-05-08 | 17SS+32d |  |  | 2026-11-14 | 2026-12-11 | 28d |  |  | 91d |  |  | Календарные дни |  | СМР | 253 |  | Начало просрочено | 50 |  | 50 |  | НАЧАТЬ |  |
| 23 | 1.1.1.2.5.10 | Монтаж щитов металлических |  | 28d | 2027-04-11 | 2027-05-08 | 17SS+32d |  |  | 2026-11-14 | 2026-12-11 | 28d |  |  | 91d |  |  | Календарные дни |  | СМР | 253 |  | Начало просрочено | 50 |  | 50 |  | НАЧАТЬ |  |
| 24 | 1.1.1.2.6 | **Профилированный лист** |  | 300d | 2026-08-16 | 2027-06-11 |  |  |  | 2026-10-15 | 2027-01-14 | 92d |  |  | 57d |  |  | Календарные дни |  | СМР | 287 |  | Начало просрочено |  |  |  | 8.6 | НАЧАТЬ |  |
| 25 | 1.1.1.2.6.1 | Монтаж перекрытий из профилированного листа Н114-750-0.7, в т.ч. метизы |  | 92d | 2027-03-12 | 2027-06-11 | 14SS+31d |  |  | 2026-10-15 | 2027-01-14 | 92d |  |  | 0d |  |  | Календарные дни |  | СМР | 287 |  | Начало в пределах 2-х недель | 30000 | м2 | 30000 |  |  |  |
| 26 | 1.1.1.2.6.2 | Монтаж покрытия из профилированного листа Н114-750-1.0, в т.ч. метизы |  | 92d | 2027-03-12 | 2027-06-11 | 14SS+31d |  |  | 2026-10-15 | 2027-01-14 | 92d |  |  | 57d |  |  | Календарные дни |  | СМР | 287 |  | Начало в пределах 2-х недель | 30000 | м2 | 30000 |  |  |  |
| 27 | 1.1.1.2.6.3 | Монтаж покрытия из профилированного листа технических помещений |  | 15d | 2026-08-16 | 2026-08-30 | 18FS-9d |  |  | 2026-12-30 | 2027-01-13 | 15d |  |  | 332d | 0d |  |  |  |  | 26 |  |  | 30000 | м2 | 30000 |  |  |  |

Notes:
- 14: В связи с остановкой СМР компании ООО "СВ" и заменой последних на нового КА
- 15: В связи с остановкой СМР компании ООО "СВ" и заменой последних на нового КА
- 25: В связи с остановкой СМР компании ООО "СВ" и заменой последних на нового КА
- 26: В связи с остановкой СМР компании ООО "СВ" и заменой последних на нового КА

| ID | WBS | Task | Duration | Start | Finish | Predecessors | Baseline start | Baseline finish | Baseline duration | Total slack | Free slack | Constraint | Calendar | БЛОК | Text9 | Text11 | Text28 | ЛОТ | ВОР (план) | Ед. изм | ВОР (остаток) | Text5 |
| --- | --- | --- | --- | --- | --- | --- | --- | --- | --- | --- | --- | --- | --- | --- | --- | --- | --- | --- | --- | --- | --- | --- |
| 28 | 1.1.1.2.7 | **Ограждающие конструкции** | 316d | 2026-08-05 | 2027-06-16 |  | 2026-11-01 | 2027-01-19 | 80d | 52d |  |  | Календарные дни | СМР | Начало просрочено | 287 | НАЧАТЬ | 8.7 |  |  |  |  |
| 29 | 1.1.1.2.7.1 | Монтаж сэндвич-панелей толщиной 120мм (наружные) | 80d | 2027-03-29 | 2027-06-16 | 25SS+17d | 2026-11-01 | 2027-01-19 | 80d | 0d |  |  | Календарные дни | СМР | Будущая задача | 287 |  |  | 1000 | м3 | 1000 |  |
| 30 | 1.1.1.2.7.2 | Монтаж сэндвич-панелей толщиной 100мм (внутренние) | 70d | 2027-03-29 | 2027-06-06 | 25SS+17d | 2026-11-01 | 2027-01-09 | 70d | 31d | 0d |  | Календарные дни | СМР | Будущая задача | 291 |  |  | 1000 | м3 | 1000 |  |
| 31 | 1.1.1.2.7.3 | Монтаж сэндвич-панелей кровельных толщиной 120мм | 80d | 2027-03-29 | 2027-06-16 | 25SS+17d | 2026-11-01 | 2027-01-19 | 80d | 52d |  |  | Календарные дни | СМР | Окончание просрочено | 287 | НАЧАТЬ И ЗАКОНЧИТЬ |  | 500 | м3 | 500 | 0 длительность в ИГ |
| 32 | 1.1.1.2.7.4 | Монтаж сэндвич-панелей толщиной 120мм (наружные) тех. Помещений | 20d | 2026-08-05 | 2026-08-24 | 18FS-20d | 2026-12-19 | 2027-01-07 | 20d | 348d |  |  |  |  |  | 26 |  |  | 500 | м3 | 500 |  |
| 33 | 1.1.1.2.8 | **Кровля** | 275d | 2026-08-26 | 2027-05-27 |  | 2026-11-01 | 2027-01-23 | 84d | 72d |  |  | Календарные дни | СМР | Начало просрочено | 286 | НАЧАТЬ | 8.8 |  |  |  |  |
| 34 | 1.1.1.2.8.1 | Устройство пароизоляции | 60d | 2027-03-29 | 2027-05-27 | 25SS+17d | 2026-11-01 | 2026-12-30 | 60d | 72d |  |  | Календарные дни | СМР | Будущая задача | 287 |  |  | 50000 | м2 | 50000 |  |
| 35 | 1.1.1.2.8.2 | Утепление покрытий PIR 60 мм | 60d | 2027-03-29 | 2027-05-27 | 25SS+17d | 2026-11-01 | 2026-12-30 | 60d | 72d |  |  | Календарные дни | СМР | Будущая задача | 287 |  |  | 50000 | м2 | 50000 |  |
| 36 | 1.1.1.2.8.3 | Утепление покрытий плитами из минеральной ваты 50 мм | 60d | 2027-03-29 | 2027-05-27 | 25SS+17d | 2026-11-01 | 2026-12-30 | 60d | 72d |  |  | Календарные дни | СМР | Будущая задача | 287 |  |  | 50000 | м2 | 50000 |  |
| 37 | 1.1.1.2.8.4 | Устройство плоских однослойных кровель из пвх мембран ecoplast v-rp (1,2 мм) (со сваркой полотен) с укладкой разделительного слоя по утеплителю, с устройством примыканий | 60d | 2027-03-29 | 2027-05-27 | 25SS+17d | 2026-11-01 | 2026-12-30 | 60d | 72d |  |  | Календарные дни | СМР | Будущая задача | 287 |  |  | 50000 | м2 | 50000 |  |
| 38 | 1.1.1.2.8.5 | Система дождевой канализации (сифонно-вакуумная система внутреннего водостока) с врезкой в колодец | 60d | 2027-03-29 | 2027-05-27 | 25SS+17d | 2026-11-01 | 2026-12-30 | 60d | 72d |  |  | Календарные дни | СМР | Будущая задача | 287 |  |  | 50000 | м2 | 50000 |  |
| 39 | 1.1.1.2.8.6 | Устройство кровли технических помещений | 15d | 2026-08-26 | 2026-09-09 | 27FS-5d | 2027-01-09 | 2027-01-23 | 15d | 332d |  |  |  |  |  | 26 |  |  | 50000 | м2 | 50000 |  |
| 40 | 1.1.1.2.9 | Внутренние лестницы | 40d | 2027-05-10 | 2027-06-18 | 25FS-33d | 2026-12-13 | 2027-01-21 | 40d | 50d |  |  | Календарные дни | СМР | Будущая задача | 233 |  | ЛОТ №9 |  |  |  |  |
| 41 | 1.1.1.3 | **ПОДЪЕМНО-СЕКЦИОННЫЕ ВОРОТА, ДОКИ** | 60d | 2027-06-09 | 2027-08-07 |  | 2027-01-12 | 2027-03-12 | 60d | 0d |  |  | Календарные дни | СМР | Начало просрочено | 325 | НАЧАТЬ | ЛОТ №11 |  |  |  |  |
| 42 | 1.1.1.3.1 | Устройство подъемных наружных секционных ворот (шхв) 2875х3000 мм ALUTECH (ProPlus) | 60d | 2027-06-09 | 2027-08-07 | 29FS-8d | 2027-01-12 | 2027-03-12 | 60d | 0d |  |  | Календарные дни | СМР | Будущая задача | 325 |  |  |  | шт |  |  |
| 43 | 1.1.1.3.2 | Устройство подъемных наружных секционных ворот (шхв) 3560х4530 мм ALUTECH (ProPlus) | 60d | 2027-06-09 | 2027-08-07 | 29FS-8d | 2027-01-12 | 2027-03-12 | 60d | 0d |  | start no earlier than 2026-07-01 | Календарные дни | СМР | Будущая задача | 325 |  |  |  | шт |  |  |
| 44 | 1.1.1.3.3 | Уравнивающая перегрузочная платформа , докшелтер ALUTECH | 60d | 2027-06-09 | 2027-08-07 | 42SS | 2027-01-12 | 2027-03-12 | 60d | 0d |  |  | Календарные дни | СМР | Будущая задача | 325 |  |  |  | шт |  |  |
| 45 | 1.1.1.3.4 | Герметизатор проема ALUTECH | 60d | 2027-06-09 | 2027-08-07 | 42SS | 2027-01-12 | 2027-03-12 | 60d | 0d |  |  | Календарные дни | СМР | Будущая задача | 325 |  |  |  | шт |  |  |
| 46 | 1.1.1.3.5 | Направляющие для колес (колесоотбойники наружные) ALUTECH | 60d | 2027-06-09 | 2027-08-07 | 42SS | 2027-01-12 | 2027-03-12 | 60d | 0d |  |  | Календарные дни | СМР | Будущая задача | 325 |  |  |  | шт |  |  |
| 47 | 1.1.1.4 | **ОКНА** | 93d | 2027-03-31 | 2027-07-01 |  | 2026-11-03 | 2027-02-03 | 93d | 37d |  |  | Календарные дни | СМР | Окончание просрочено | 287 | НАЧАТЬ И ЗАКОНЧИТЬ | ЛОТ №12 |  |  |  |  |
| 48 | 1.1.1.4.1 | **Наружные** | 93d | 2027-03-31 | 2027-07-01 |  | 2026-11-03 | 2027-02-03 | 93d | 37d |  |  | Календарные дни | СМР | Начало просрочено | 287 | НАЧАТЬ | 12.1 |  |  |  |  |
| 49 | 1.1.1.4.1.1 | Наружные оконные блоки с ламинацией | 93d | 2027-03-31 | 2027-07-01 | 29FS-78d | 2026-11-03 | 2027-02-03 | 93d | 37d |  |  | Календарные дни | СМР | Будущая задача | 287 |  |  | 1100 | м2 | 1100 |  |
| 50 | 1.1.1.5 | **ВИТРАЖИ** | 78d | 2027-04-16 | 2027-07-02 |  | 2026-11-19 | 2027-02-04 | 78d | 36d |  |  | Календарные дни | СМР | Окончание просрочено | 287 | НАЧАТЬ И ЗАКОНЧИТЬ | ЛОТ №13 |  |  |  |  |
| 51 | 1.1.1.5.1 | **Наружные** | 78d | 2027-04-16 | 2027-07-02 |  | 2026-11-19 | 2027-02-04 | 78d | 36d |  |  | Календарные дни | СМР | Окончание просрочено | 287 | НАЧАТЬ И ЗАКОНЧИТЬ | 13.1 |  |  |  |  |
| 52 | 1.1.1.5.1.1 | Наружные витражи | 78d | 2027-04-16 | 2027-07-02 | 29FS-62d | 2026-11-19 | 2027-02-04 | 78d | 36d |  |  | Календарные дни | СМР | Будущая задача | 287 |  |  | 600 | м2 | 600 |  |
| 53 | 1.1.1.5.1.2 | Наружные двери алюминевые 1200*2100мм | 78d | 2027-04-16 | 2027-07-02 | 29FS-62d | 2026-11-19 | 2027-02-04 | 78d | 36d |  |  | Календарные дни | СМР | Будущая задача | 287 |  |  | 600 | м2 | 600 |  |
| 54 | 1.1.1.5.1.3 | Наружный витраж с дверью на АБК 2100*2500мм (входные двери на Base) | 78d | 2027-04-16 | 2027-07-02 | 29FS-62d | 2026-11-19 | 2027-02-04 | 78d | 36d |  |  | Календарные дни | СМР | Будущая задача | 287 |  |  | 600 | м2 | 600 |  |
| 55 | 1.1.1.5.2 | Внутренние | 78d | 2027-04-16 | 2027-07-02 | 29FS-62d | 2026-11-19 | 2027-02-04 | 78d | 36d |  |  | Календарные дни | СМР | Окончание просрочено | 287 | НАЧАТЬ И ЗАКОНЧИТЬ | 13.2 | 400 | м2 | 400 |  |

Notes:
- 29: В связи с остановкой СМР компании ООО "СВ" и заменой последних на нового КА
- 30: В связи с остановкой СМР компании ООО "СВ" и заменой последних на нового КА
- 31: В связи с остановкой СМР компании ООО "СВ" и заменой последних на нового КА
- 34: В связи с остановкой СМР компании ООО "СВ" и заменой последних на нового КА
- 35: В связи с остановкой СМР компании ООО "СВ" и заменой последних на нового КА
- 42: В связи с остановкой СМР компании ООО "СВ" и заменой последних на нового КА
- 43: В связи с остановкой СМР компании ООО "СВ" и заменой последних на нового КА
- 44: В связи с остановкой СМР компании ООО "СВ" и заменой последних на нового КА

| ID | WBS | Task | Duration | Start | Finish | Predecessors | Baseline start | Baseline finish | Baseline duration | Total slack | Free slack | Calendar | БЛОК | Text9 | Text11 | Text28 | ЛОТ | ВОР (план) | Ед. изм | ВОР (остаток) |
| --- | --- | --- | --- | --- | --- | --- | --- | --- | --- | --- | --- | --- | --- | --- | --- | --- | --- | --- | --- | --- |
| 56 | 1.1.1.6 | **ДВЕРИ, РАСПАШНЫЕ ВОРОТА** | 45d | 2027-06-09 | 2027-07-23 |  | 2027-01-12 | 2027-02-25 | 45d | 15d |  | Календарные дни | СМР | Окончание просрочено | 299 | НАЧАТЬ И ЗАКОНЧИТЬ | ЛОТ №14 |  |  |  |
| 57 | 1.1.1.6.1 | **Наружные** | 45d | 2027-06-09 | 2027-07-23 |  | 2027-01-12 | 2027-02-25 | 45d | 15d |  | Календарные дни | СМР | Начало просрочено | 334 | НАЧАТЬ | 14.1 |  |  |  |
| 58 | 1.1.1.6.1.1 | Наружные двери металлические утепленные 2080*1670мм | 45d | 2027-06-09 | 2027-07-23 | 29FS-8d | 2027-01-12 | 2027-02-25 | 45d | 15d |  | Календарные дни | СМР | Будущая задача | 334 |  |  | 35 | шт | 35 |
| 59 | 1.1.1.6.1.2 | Наружные двери металлические утепленные 2080*1260мм | 45d | 2027-06-09 | 2027-07-23 | 29FS-8d | 2027-01-12 | 2027-02-25 | 45d | 15d |  | Календарные дни | СМР | Будущая задача | 334 |  |  | 35 | шт | 35 |
| 60 | 1.1.1.6.2 | **Внутренние** | 45d | 2027-06-09 | 2027-07-23 |  | 2027-01-12 | 2027-02-25 | 45d | 15d |  | Календарные дни | СМР | Начало просрочено | 299 | НАЧАТЬ | 14.2 |  |  |  |
| 61 | 1.1.1.6.2.1 | Внутренние противопожарные двери металлические 2080*970мм | 45d | 2027-06-09 | 2027-07-23 | 29FS-8d | 2027-01-12 | 2027-02-25 | 45d | 15d |  | Календарные дни | СМР | Будущая задача | 299 |  |  | 60 | шт | 60 |
| 62 | 1.1.1.7 | **КОЗЫРЬКИ** | 32d | 2027-06-01 | 2027-07-02 |  | 2027-01-04 | 2027-02-04 | 32d | 36d |  | Календарные дни | СМР | Начало просрочено | 287 | НАЧАТЬ | ЛОТ №15 |  |  |  |
| 63 | 1.1.1.7.1 | Стеклянный козырек 2х1,2 м (две тяги, тонированное стекло триплекс 8+8) | 32d | 2027-06-01 | 2027-07-02 | 29FS-16d | 2027-01-04 | 2027-02-04 | 32d | 36d |  | Календарные дни | СМР | Будущая задача | 287 |  |  | 600 | м2 | 600 |
| 64 | 1.1.1.8 | ОГНЕЗАЩИТА | 90d | 2027-02-26 | 2027-05-26 | 14FS-73d | 2026-10-01 | 2026-12-29 | 90d | 73d |  | Календарные дни | СМР | Будущая задача | 265 |  | ЛОТ №16 | 35000 | м2 | 35000 |
| 65 | 1.1.1.9 | **ПРОМЫШЛЕННЫЕ ПОЛЫ, ПОЛЫ АБК, ПЕРЕКРЫТИЯ, ПОКРЫТИЯ** | 84d | 2027-04-11 | 2027-07-03 |  | 2026-11-14 | 2027-02-05 | 84d | 35d |  | Календарные дни | СМР | Окончание просрочено | 261 | НАЧАТЬ И ЗАКОНЧИТЬ | ЛОТ №17 |  |  |  |
| 66 | 1.1.1.9.1 | **ОСНОВАНИЕ ПОД ПОЛЫ** | 55d | 2027-04-11 | 2027-06-04 |  | 2026-11-14 | 2027-01-07 | 55d | 35d |  | Календарные дни | СМР | Окончание просрочено | 277 | НАЧАТЬ И ЗАКОНЧИТЬ | 17.1 |  |  |  |
| 67 | 1.1.1.9.1.1 | Основание под полы (стабилизация грунта + щебень 80 мм/песок 100 мм + геотекстиль) | 55d | 2027-04-11 | 2027-06-04 | 14FS-29d | 2026-11-14 | 2027-01-07 | 55d | 35d | 0d | Календарные дни | СМР | Начало просрочено | 277 | НАЧАТЬ |  | 40000 | м2 | 40000 |
| 68 | 1.1.1.9.2 | **ПРОМЫШЛЕННЫЕ ПОЛЫ** | 55d | 2027-05-10 | 2027-07-03 |  | 2026-12-13 | 2027-02-05 | 55d | 35d |  | Календарные дни | СМР | Окончание просрочено | 261 | НАЧАТЬ И ЗАКОНЧИТЬ | 17.2 |  |  |  |
| 69 | 1.1.1.9.2.1 | Работы по устройству монолитной железобетонной плиты пола проектной толщиной 200мм, с армированием (нижний пояс) стержневой арматурой класса А500 Ø10 с ячейкой 200х200мм, из бетона класса В25, с нанесением упрочняющего покрытия, с устройством температурно | 55d | 2027-05-10 | 2027-07-03 | 67SS+29d | 2026-12-13 | 2027-02-05 | 55d | 35d | 0d | Календарные дни | СМР | Будущая задача | 261 |  |  | 40000 | м2 | 40000 |
| 70 | 1.1.1.9.3 | **Полы АБК/перекрытия/покрытие** | 40d | 2027-05-10 | 2027-06-18 |  | 2026-12-13 | 2027-01-21 | 40d | 50d |  | Календарные дни | СМР | Окончание просрочено | 268 | НАЧАТЬ И ЗАКОНЧИТЬ | 17.3 |  |  |  |
| 71 | 1.1.1.9.3.1 | Основание под плиту пола в АБК: песок 200, щебень фр.20-40 - 200, пленка (геотекстиль) | 40d | 2027-05-10 | 2027-06-18 | 69SS | 2026-12-13 | 2027-01-21 | 40d | 50d |  | Календарные дни | СМР | Будущая задача | 268 |  |  | 7000 | м2 | 7000 |
| 72 | 1.1.1.9.3.2 | Устройство монолитной ж/б плиты пола в АБК толщ. 140мм с утеплением | 40d | 2027-05-10 | 2027-06-18 | 69SS | 2026-12-13 | 2027-01-21 | 40d | 50d |  | Календарные дни | СМР | Будущая задача | 268 |  |  | 7000 | м2 | 7000 |
| 73 | 1.1.1.9.3.3 | Устройство монолитной плиты перекрытия 170мм по смонтированному профлисту бетоном В25 (вкл. температурно-усадочный и деформационные швы, монолитный армированный пояс) | 40d | 2027-05-10 | 2027-06-18 | 69SS | 2026-12-13 | 2027-01-21 | 40d | 50d |  | Календарные дни | СМР | Будущая задача | 268 |  |  | 7000 | м2 | 7000 |
| 74 | 1.1.1.10 | **ДЕКОР ФАСАДОВ** | 62d | 2027-05-02 | 2027-07-02 |  | 2026-12-05 | 2027-02-04 | 62d | 36d |  | Календарные дни | СМР | Будущая задача | 287 |  | ЛОТ №18 |  |  |  |
| 75 | 1.1.1.10.1 | Монтаж металлокасет и декоративного перфорированного листа | 62d | 2027-05-02 | 2027-07-02 | 29FS-46d | 2026-12-05 | 2027-02-04 | 62d | 36d |  | Календарные дни | СМР | Будущая задача | 287 |  |  | 2500 | м2 | 2500 |
| 76 | 1.1.1.11 | **ВНУТРЕННИЕ СЕТИ** | 137d | 2027-02-07 | 2027-06-23 |  | 2026-09-12 | 2027-01-26 | 137d | 45d |  | Календарные дни | СМР | Окончание просрочено | 231 | НАЧАТЬ И ЗАКОНЧИТЬ | ЛОТ №19 |  |  |  |
| 77 | 1.1.1.11.1 | **ВНУТРЕННИЕ СЕТИ: ВОДОСНАБЖЕНИЕ, ВОДОТВЕДЕНИЕ, ОТОПЛЕНИЕ, ВЕНТИЛЯЦИЯ** | 90d | 2027-03-21 | 2027-06-18 |  | 2026-10-24 | 2027-01-21 | 90d | 50d |  | Календарные дни | СМР | Будущая задача | 227 |  | 19.1 |  |  |  |
| 78 | 1.1.1.11.1.1 | Хозяйственно-бытовой водопровод, включая пожарный водопровод (холодное и горячее водоснабжение) Light Industrial | 90d | 2027-03-21 | 2027-06-18 | 14FS-50d | 2026-10-24 | 2027-01-21 | 90d | 50d |  | Календарные дни | СМР | Будущая задача | 227 |  |  | 600 | пог.м | 600 |
| 79 | 1.1.1.11.1.2 | Система хоз-бытовой и ливневой канализации Light Industrial | 90d | 2027-03-21 | 2027-06-18 | 14FS-50d | 2026-10-24 | 2027-01-21 | 90d | 50d |  | Календарные дни | СМР | Будущая задача | 227 |  |  | 600 | пог.м | 600 |
| 80 | 1.1.1.11.1.3 | Вентиляция Light Industrial | 90d | 2027-03-21 | 2027-06-18 | 14FS-50d | 2026-10-24 | 2027-01-21 | 90d | 50d |  | Календарные дни | СМР | Будущая задача | 227 |  |  | 600 | пог.м | 600 |
| 81 | 1.1.1.11.1.4 | Отопление и теплоснабжение Light Industrial | 90d | 2027-03-21 | 2027-06-18 | 14FS-50d | 2026-10-24 | 2027-01-21 | 90d | 50d |  | Календарные дни | СМР | Будущая задача | 227 |  |  | 600 | пог.м | 600 |
| 82 | 1.1.1.11.1.5 | Противопожарные резервуары 2*250 м3 с насосной станцией | 90d | 2027-03-21 | 2027-06-18 | 14FS-50d | 2026-10-24 | 2027-01-21 | 90d | 50d |  | Календарные дни | СМР | Будущая задача | 227 |  |  | 600 | пог.м | 600 |

Notes:
- 67: В связи с остановкой СМР компании ООО "СВ" и заменой последних на нового КА
- 69: В связи с остановкой СМР компании ООО "СВ" и заменой последних на нового КА
- 71: В связи с остановкой СМР компании ООО "СВ" и заменой последних на нового КА
- 72: В связи с остановкой СМР компании ООО "СВ" и заменой последних на нового КА
- 73: В связи с остановкой СМР компании ООО "СВ" и заменой последних на нового КА

| ID | WBS | Task | Type | Duration | Start | Finish | Predecessors | Baseline start | Baseline finish | Baseline duration | Total slack | Calendar | БЛОК | Text9 | Text11 | ЛОТ | ВОР (план) | Ед. изм | ВОР (остаток) | Text28 |
| --- | --- | --- | --- | --- | --- | --- | --- | --- | --- | --- | --- | --- | --- | --- | --- | --- | --- | --- | --- | --- |
| 83 | 1.1.1.11.2 | **ВНУТРЕННИЕ СЕТИ: ЭЛЕТРОСНАБЖЕНИЕ** |  | 90d | 2027-03-21 | 2027-06-18 |  | 2026-10-24 | 2027-01-21 | 90d | 50d | Календарные дни | СМР | Будущая задача | 226 | 19.2 |  |  |  |  |
| 84 | 1.1.1.11.2.1 | Электроснабжение (ЭОМ) Light Industrial |  | 90d | 2027-03-21 | 2027-06-18 | 14FS-50d | 2026-10-24 | 2027-01-21 | 90d | 50d | Календарные дни | СМР | Будущая задача | 226 |  | 1500 | пог.м | 1500 |  |
| 85 | 1.1.1.11.2.2 | Светильники Light Industrial |  | 90d | 2027-03-21 | 2027-06-18 | 14FS-50d | 2026-10-24 | 2027-01-21 | 90d | 50d | Календарные дни | СМР | Будущая задача | 226 |  | 1500 | пог.м | 1500 |  |
| 86 | 1.1.1.11.3 | **ВНУТРЕННИЕ СЕТИ: ПОЖАРНЫЕ** |  | 137d | 2027-02-07 | 2027-06-23 |  | 2026-09-12 | 2027-01-26 | 137d | 45d | Календарные дни | СМР | Будущая задача | 234 | 19.3 |  |  |  |  |
| 87 | 1.1.1.11.3.1 | Система управления оповещением и эвакуацией СОУЭ Автоматическая пожарная сигнализация АПС Комплексная автоматизация |  | 45d | 2027-05-10 | 2027-06-23 | 14 | 2026-12-13 | 2027-01-26 | 45d | 45d | Календарные дни | СМР | Будущая задача | 237 |  | 600 | пог.м | 600 |  |
| 88 | 1.1.1.11.3.2 | Спринклерная система пожаротушения АУПТ (включая пожарный водопровод) |  | 120d | 2027-02-07 | 2027-06-06 | 14FS-92d | 2026-09-12 | 2027-01-09 | 120d | 62d | Календарные дни | СМР | Будущая задача | 217 |  | 600 | пог.м | 600 |  |
| 89 | 1.1.1.12 | **ОТДЕЛОЧНЫЕ РАБОТЫ** |  | 90d | 2027-04-09 | 2027-07-07 |  | 2026-11-12 | 2027-02-09 | 90d | 31d | Календарные дни | СМР | Окончание просрочено | 238 | ЛОТ №20 |  |  |  | НАЧАТЬ И ЗАКОНЧИТЬ |
| 90 | 1.1.1.12.1 | Отделочные работы (потолок - окраска, сан.узел - грильято; стены - штукатурка под бетон, сан.узел - керамогранит/окраска; полы - ламинат; перегородки - ГКЛВ/ГКЛВО). Двери, окна, лестница -НЕ ВХОДЯТ В СТОИМОСТЬ. |  | 90d | 2027-04-09 | 2027-07-07 | 30FS-59d | 2026-11-12 | 2027-02-09 | 90d | 31d | Календарные дни | СМР | Будущая задача | 252 |  | 10000 | м2 | 10000 |  |
| 91 | 1.1.1.12.2 | Отделочные работы АБК 9,3*6м-2эт. (потолок - окраска, сан.узел - грильято; стены - штукатурка под бетон, сан.узел - керамогранит/окраска; полы - ламинат/керамогранит; перегородки - ГКЛВ/ГКЛВО). Двери, окна, лестница -НЕ ВХОДЯТ В СТОИМОСТЬ. |  | 90d | 2027-04-09 | 2027-07-07 | 30FS-59d | 2026-11-12 | 2027-02-09 | 90d | 31d | Календарные дни | СМР | Будущая задача | 252 |  | 10000 | м2 | 10000 |  |
| 92 | 1.1.1.12.3 | Отделочные работы пристройки под офис/ТЦ (потолок - окраска, сан.узел - грильято; стены - штукатурка под бетон, сан.узел - керамогранит/окраска; полы - ламинат/керамогранит; перегородки - ГКЛВ/ГКЛВО). Двери, окна, лестница -НЕ ВХОДЯТ В СТОИМОСТЬ. |  | 90d | 2027-04-09 | 2027-07-07 | 30FS-59d | 2026-11-12 | 2027-02-09 | 90d | 31d | Календарные дни | СМР | Будущая задача | 252 |  | 10000 | м2 | 10000 |  |
| 93 | 1.1.1.12.4 | Внутренние двери деревянные размером 970*2080мм |  | 90d | 2027-04-09 | 2027-07-07 | 30FS-59d | 2026-11-12 | 2027-02-09 | 90d | 31d | Календарные дни | СМР | Будущая задача | 252 |  | 10000 | м2 | 10000 |  |
| 94 | 1.1.1.13 | Завершение СМР | milestone | 0d | 2027-08-07 | 2027-08-07 | 32, 39, 19, 20, 21, 22, 23, 34, 35, 36, 37, 38, 43, 44, 45, 46, 49, 52, 53, 54, 55, 58, 59, 71, 72, 73, 75, 78, 79, 80, 81, 82, 83, 84, 85, 87, 88, 90, 91, 92 | 2027-03-12 | 2027-03-12 | 0d | 0d |  |  |  | 358 |  |  |  |  |  |
